# Assignment2_Plan1

Schedule from MS Project, 2021-02-22 to 2022-10-25.

## Calendars

- Standard: Mon-Fri 08:00-12:00, 13:00-17:00; Sat-Sun off.

## Schedule

| ID | WBS | Task | Duration | Start | Finish | Predecessors | Total slack | Free slack | Constraint |
| --- | --- | --- | --- | --- | --- | --- | --- | --- | --- |
| 1 | 1 | **Assignment2_Project_Plan1** | 436.31d | 2021-02-22 | 2022-10-25 |  | 0d |  |  |
| 2 | 1.1 | **Project Plan** | 9.05d | 2021-02-22 | 2021-03-05 |  | 0d |  |  |
| 3 | 1.1.1 | Write Plan | 2.83d | 2021-02-22 | 2021-02-24 |  | 0d |  | start no earlier than 2021-02-22 |
| 4 | 1.1.2 | **Review Plan** | 4.25d | 2021-02-24 | 2021-03-03 | 3 | 0d |  |  |
| 5 | 1.1.2.1 | Preparation for review | 2.83d | 2021-02-24 | 2021-03-01 | 3 | 0d |  |  |
| 6 | 1.1.2.2 | Review meeting | 1.42d | 2021-03-01 | 2021-03-03 | 5 | 0d |  |  |
| 7 | 1.1.3 | Rework | 1.97d | 2021-03-03 | 2021-03-05 | 6 | 0d |  |  |
| 8 | 1.2 | **Requirement** | 18.53d | 2021-03-05 | 2021-03-31 | 7 | 0d |  |  |
| 9 | 1.2.1 | Write requirement | 6.08d | 2021-03-05 | 2021-03-15 | 7 | 0d |  |  |
| 10 | 1.2.2 | **Review Requirements** | 9.12d | 2021-03-15 | 2021-03-26 | 9 | 0d |  |  |
| 11 | 1.2.2.1 | Preparation for review | 6.08d | 2021-03-15 | 2021-03-23 | 9 | 0d |  |  |
| 12 | 1.2.2.2 | review meeting | 3.04d | 2021-03-23 | 2021-03-26 | 11 | 0d |  |  |
| 13 | 1.2.3 | Rework | 3.33d | 2021-03-26 | 2021-03-31 | 12 | 0d |  |  |
| 14 | 1.3 | **Lab and Environment Setup** | 28.55d | 2021-03-31 | 2021-05-11 | 13 | 380.18d |  |  |
| 15 | 1.3.1 | **Hardware** | 18.3d | 2021-03-31 | 2021-04-26 | 13 | 380.18d |  |  |
| 16 | 1.3.1.1 | **Install Network Elements** | 3d | 2021-03-31 | 2021-04-05 | 13 | 380.18d |  |  |
| 17 | 1.3.1.1.1 | Routers | 1d | 2021-03-31 | 2021-04-01 | 13 | 18.17d | 0d |  |
| 18 | 1.3.1.1.2 | Bridge | 2d | 2021-04-01 | 2021-04-05 | 17 | 18.17d | 0d |  |
| 19 | 1.3.1.2 | Install Server | 8d | 2021-04-05 | 2021-04-15 | 18 | 18.17d | 0d |  |
| 20 | 1.3.1.3 | Install Clients | 7.3d | 2021-04-15 | 2021-04-26 | 19 | 18.17d | 0d |  |
| 21 | 1.3.2 | **Software** | 10.25d | 2021-04-26 | 2021-05-11 | 20 | 380.18d |  |  |
| 22 | 1.3.2.1 | Install Development Tools | 5.75d | 2021-04-26 | 2021-05-04 | 20 | 18.17d | 0d |  |
| 23 | 1.3.2.2 | Install Testing Tools | 4.5d | 2021-05-04 | 2021-05-11 | 22 | 18.17d |  |  |
| 24 | 1.4 | **Analysis/Design Document** | 29d | 2021-03-31 | 2021-05-11 | 13 | 0d |  |  |
| 25 | 1.4.1 | Write DD | 13.25d | 2021-03-31 | 2021-04-19 | 13 | 0d |  |  |

| ID | WBS | Task | Duration | Start | Finish | Predecessors | Total slack | Free slack |
| --- | --- | --- | --- | --- | --- | --- | --- | --- |
| 26 | 1.4.2 | **Review DD** | 7.95d | 2021-04-19 | 2021-04-29 | 25 | 0d |  |
| 27 | 1.4.2.1 | Preparation for DD | 5.3d | 2021-04-19 | 2021-04-27 | 25 | 0d |  |
| 28 | 1.4.2.2 | Review meeting | 2.65d | 2021-04-27 | 2021-04-29 | 27 | 0d |  |
| 29 | 1.4.3 | Rework | 7.8d | 2021-04-29 | 2021-05-11 | 28 | 0d |  |
| 30 | 1.5 | **Data Model** | 15.27d | 2021-05-11 | 2021-06-01 | 29 | 364.46d |  |
| 31 | 1.5.1 | Create Data Model | 7.75d | 2021-05-11 | 2021-05-21 | 29 | 364.46d | 0d |
| 32 | 1.5.2 | **Review Data Model** | 2.33d | 2021-05-21 | 2021-05-25 | 31 | 364.46d |  |
| 33 | 1.5.2.1 | Preparation for DM | 1.55d | 2021-05-21 | 2021-05-24 | 31 | 364.46d | 0d |
| 34 | 1.5.2.2 | Review meeting | 0.78d | 2021-05-24 | 2021-05-25 | 33 | 364.46d | 0d |
| 35 | 1.5.3 | Rework | 5.19d | 2021-05-25 | 2021-06-01 | 34 | 364.46d |  |
| 36 | 1.6 | **Coding and unit test** | 270.82d | 2021-05-11 | 2022-05-25 | 29 | 0d |  |
| 37 | 1.6.1 | Write Code | 158.08d | 2021-05-11 | 2021-12-17 | 29 | 0d |  |
| 38 | 1.6.2 | **Unit Testing** | 90.68d | 2021-12-17 | 2022-04-25 | 37 | 0d |  |
| 39 | 1.6.2.1 | Prepare/Execute test Cases | 38.46d | 2021-12-17 | 2022-02-10 | 37 | 0d |  |
| 40 | 1.6.2.2 | Fix Found Defects | 36.15d | 2022-02-10 | 2022-04-01 | 39 | 0d |  |
| 41 | 1.6.2.3 | Test Fixed Defects | 16.07d | 2022-04-01 | 2022-04-25 | 40 | 0d |  |
| 42 | 1.6.3 | **Code Inspection** | 22.06d | 2022-04-25 | 2022-05-25 | 41 | 0d |  |
| 43 | 1.6.3.1 | Preparation for Code Inspection | 5.27d | 2022-04-25 | 2022-05-02 | 41 | 0d |  |
| 44 | 1.6.3.2 | Code Inspection Meeting | 3.96d | 2022-05-02 | 2022-05-06 | 43 | 0d |  |
| 45 | 1.6.3.3 | Rework | 12.83d | 2022-05-06 | 2022-05-25 | 44 | 0d |  |
| 46 | 1.7 | **Testing** | 108.91d | 2022-05-25 | 2022-10-25 | 13, 45 | 0d |  |
| 47 | 1.7.1 | Write test Plan (TP) | 31.3d | 2022-05-25 | 2022-07-07 | 13 | 0d |  |
| 48 | 1.7.2 | **Review TP** | 18.41d | 2022-07-07 | 2022-08-03 | 47 | 0d |  |
| 49 | 1.7.2.1 | Preparation for TP | 7.83d | 2022-07-07 | 2022-07-19 | 47 | 0d |  |
| 50 | 1.7.2.2 | Review TP meeting | 3.92d | 2022-07-19 | 2022-07-25 | 49 | 0d |  |
| 51 | 1.7.2.3 | Rework | 6.66d | 2022-07-25 | 2022-08-03 | 50 | 0d |  |
| 52 | 1.7.3 | Execute TP(test cases) | 35.6d | 2022-08-03 | 2022-09-21 | 45, 51 | 0d |  |
| 53 | 1.7.4 | Fix Found Defects | 23.6d | 2022-09-21 | 2022-10-25 | 52 | 0d |  |

| ID | WBS | Task | Duration | Start | Finish | Predecessors | Total slack | Free slack |
| --- | --- | --- | --- | --- | --- | --- | --- | --- |
| 54 | 1.8 | **Documentation** | 17.32d | 2021-03-31 | 2021-04-23 | 13 | 377.33d |  |
| 55 | 1.8.1 | User Documentation | 5.33d | 2021-03-31 | 2021-04-07 | 13 | 377.33d | 0d |
| 56 | 1.8.2 | **Review UD** | 11.99d | 2021-04-07 | 2021-04-23 | 55 | 377.33d |  |
| 57 | 1.8.2.1 | Preparation for UD Review meeting | 5.33d | 2021-04-07 | 2021-04-15 | 55 | 377.33d | 0d |
| 58 | 1.8.2.2 | Review UD Meeting | 3.33d | 2021-04-15 | 2021-04-20 | 57 | 377.33d | 0d |
| 59 | 1.8.2.3 | Rework | 3.33d | 2021-04-20 | 2021-04-23 | 58 | 377.33d | 0d |
| 60 | 1.9 | **Training** | 14.08d | 2021-04-23 | 2021-05-13 | 59 | 377.33d |  |
| 61 | 1.9.1 | Training Handouts(TH) | 9d | 2021-04-23 | 2021-05-06 | 59 | 377.33d | 0d |
| 62 | 1.9.2 | **Review Training Handouts(TH)** | 5.08d | 2021-05-06 | 2021-05-13 | 61 | 377.33d |  |
| 63 | 1.9.2.1 | Preparation for TH review meeting | 1.13d | 2021-05-06 | 2021-05-10 | 61 | 377.33d | 0d |
| 64 | 1.9.2.2 | Review TH Meeting | 0.9d | 2021-05-10 | 2021-05-10 | 63 | 377.33d | 0d |
| 65 | 1.9.2.3 | Rework | 3.05d | 2021-05-10 | 2021-05-13 | 64 | 377.33d |  |
